# GanttChart

Schedule from MS Project, 2013-08-07 to 2013-12-09, costs in $, A marks actual dates.

## Calendars

- Standard: Mon-Fri 08:00-12:00, 13:00-17:00; Sat-Sun off. Exceptions (off unless hours are given): 2013-10-26 08:00-12:00, 13:00-17:00, 2013-12-07 to 2013-12-08 08:00-12:00, 13:00-17:00.

## Resources

| Resource | Rate |
| --- | --- |
| Nelián Colón | 26.44 |
| Samuel Rodríguez | 21.63 |
| Daniel Santiago | 21.63 |

## Schedule

| ID | WBS | Task | Type | Duration | Start | Finish | Predecessors | Complete | Remaining | Total slack | Constraint | Deadline | Resources | Work | Actual work | Cost | Actual cost |
| --- | --- | --- | --- | --- | --- | --- | --- | --- | --- | --- | --- | --- | --- | --- | --- | --- | --- |
| 1 | 1 | **Panda Code Reviews** |  | 92d | 2013-08-07 A | 2013-12-09 |  | 36% | 58.68d | 0d |  | 2013-12-09 |  | 878.43h | 430.43h | 20,422.82 | 10,001.46 |
| 2 | 1.1 | **System Specification** |  | 5d | 2013-08-07 A | 2013-08-13 A |  | 100% |  |  |  |  |  | 120h | 120h | 2,788 | 2,788 |
| 3 | 1.1.1 | Definition of Needs |  | 1d | 2013-08-07 A | 2013-08-07 A |  | 100% |  |  |  |  | Daniel Santiago [50%]; Nelián Colón [50%]; Samuel Rodríguez [50%] | 24h | 24h | 557.6 | 557.6 |
| 4 | 1.1.2 | Concept Development |  | 1d | 2013-08-08 A | 2013-08-08 A | 3 | 100% |  |  |  |  | Daniel Santiago [50%]; Nelián Colón [50%]; Samuel Rodríguez [50%] | 24h | 24h | 557.6 | 557.6 |
| 5 | 1.1.3 | Analysis of Alternatives |  | 1d | 2013-08-09 A | 2013-08-09 A | 4 | 100% |  |  |  |  | Daniel Santiago [50%]; Nelián Colón [50%]; Samuel Rodríguez [50%] | 24h | 24h | 557.6 | 557.6 |
| 6 | 1.1.4 | System requirements Assessment |  | 1d | 2013-08-12 A | 2013-08-12 A | 5 | 100% |  |  |  |  | Daniel Santiago [50%]; Nelián Colón [50%]; Samuel Rodríguez [50%] | 24h | 24h | 557.6 | 557.6 |
| 7 | 1.1.5 | Specs Document Elaboration |  | 1d | 2013-08-13 A | 2013-08-13 A | 6 | 100% |  |  |  |  | Daniel Santiago [50%]; Nelián Colón [50%]; Samuel Rodríguez [50%] | 24h | 24h | 557.6 | 557.6 |
| 8 | 1.2 | **Proposal Development** |  | 13d | 2013-08-13 A | 2013-08-30 A | 2 | 100% |  |  |  | 2013-08-30 |  | 104h | 104h | 2,441.92 | 2,441.92 |
| 9 | 1.2.1 | Objectives | milestone | 0d | 2013-08-13 A | 2013-08-13 A | 7 | 100% |  |  |  |  | Samuel Rodríguez [50%] |  |  |  |  |
| 10 | 1.2.2 | Problem Statement |  | 1d | 2013-08-14 A | 2013-08-14 A | 9 | 100% |  |  |  |  | Samuel Rodríguez [50%] | 8h | 8h | 173.04 | 173.04 |
| 11 | 1.2.3 | Project Antecedents |  | 1d | 2013-08-14 A | 2013-08-14 A | 9 | 100% |  |  |  |  | Nelián Colón [50%] | 8h | 8h | 211.52 | 211.52 |
| 12 | 1.2.4 | General Approach |  | 1d | 2013-08-15 A | 2013-08-15 A | 11 | 100% |  |  |  |  | Nelián Colón [50%] | 8h | 8h | 211.52 | 211.52 |
| 13 | 1.2.5 | Personnel Workload Distribution |  | 1d | 2013-08-16 A | 2013-08-16 A | 12 | 100% |  |  |  |  | Nelián Colón [50%] | 8h | 8h | 211.52 | 211.52 |
| 14 | 1.2.6 | Budget |  | 1d | 2013-08-15 A | 2013-08-15 A | 10 | 100% |  |  |  |  | Samuel Rodríguez [50%] | 8h | 8h | 173.04 | 173.04 |
| 15 | 1.2.7 | Assessment Methods |  | 1d | 2013-08-20 A | 2013-08-20 A | 13 | 100% |  |  |  |  | Nelián Colón [50%] | 8h | 8h | 211.52 | 211.52 |
| 16 | 1.2.8 | Impact |  | 1d | 2013-08-14 A | 2013-08-14 A | 9 | 100% |  |  |  |  | Daniel Santiago [50%] | 8h | 8h | 173.04 | 173.04 |
| 17 | 1.2.9 | Market Overview |  | 1d | 2013-08-15 A | 2013-08-15 A | 11 | 100% |  |  |  |  | Daniel Santiago [50%] | 8h | 8h | 173.04 | 173.04 |
| 18 | 1.2.10 | Risk Management |  | 1d | 2013-08-16 A | 2013-08-16 A | 17 | 100% |  |  |  |  | Daniel Santiago [50%] | 8h | 8h | 173.04 | 173.04 |
| 19 | 1.2.11 | Executive Summary |  | 1d | 2013-08-21 A | 2013-08-21 A | 9, 10, 11, 12, 13, 14, 15, 16, 17, 18 | 100% |  |  |  |  | Samuel Rodríguez [50%] | 8h | 8h | 173.04 | 173.04 |
| 20 | 1.2.12 | First Draft Review |  | 1d | 2013-08-30 A | 2013-08-30 A | 19 | 100% |  |  |  |  | Daniel Santiago [50%]; Nelián Colón [50%]; Samuel Rodríguez [50%] | 24h | 24h | 557.6 | 557.6 |
| 21 | 1.3 | Final Proposal Review and Acceptance | milestone | 10d | 2013-09-02 A | 2013-09-13 A | 20 | 100% |  |  | finish no earlier than 2013-09-13 |  | Daniel Santiago [50%]; Nelián Colón [50%]; Samuel Rodríguez [50%] | 120h | 120h | 2,788 | 2,788 |
| 22 | 1.4 | Proposal Presentation |  | 1d | 2013-09-09 A | 2013-09-09 A | 21 | 100% |  |  |  |  | Daniel Santiago [50%]; Nelián Colón [50%]; Samuel Rodríguez [50%] | 24h | 24h | 557.6 | 557.6 |
| 23 | 1.5 | **System Design** |  | 14d | 2013-09-11 A | 2013-09-30 A | 22 | 100% |  |  |  | 2013-09-30 |  | 62.43h | 62.43h | 1,425.94 | 1,425.94 |
| 24 | 1.5.1 | **Software Design** |  | 14d | 2013-09-11 A | 2013-09-30 A | 22 | 100% |  |  |  | 2013-09-30 |  | 62.43h | 62.43h | 1,425.94 | 1,425.94 |
| 25 | 1.5.1.1 | Use Case Diagrams |  | 2d | 2013-09-11 A | 2013-09-12 A | 22 | 100% |  |  |  |  | Nelián Colón [15%] | 2.57h | 2.57h | 67.95 | 67.95 |
| 26 | 1.5.1.2 | Use Case Descriptions |  | 2d | 2013-09-13 A | 2013-09-16 A | 25 | 100% |  |  |  |  | Nelián Colón [15%] | 2.57h | 2.57h | 67.97 | 67.97 |
| 27 | 1.5.1.3 | Sequential Diagrams |  | 2d | 2013-09-17 A | 2013-09-18 A | 26 | 100% |  |  |  |  | Nelián Colón [15%] | 2.57h | 2.57h | 67.95 | 67.95 |
| 28 | 1.5.1.4 | Class Diagrams |  | 1d | 2013-09-17 A | 2013-09-17 A | 27 | 100% |  |  |  |  | Daniel Santiago [50%] | 4h | 4h | 86.52 | 86.52 |
| 29 | 1.5.1.5 | Flow Charts |  | 1d | 2013-09-20 A | 2013-09-20 A | 28 | 100% |  |  |  |  | Daniel Santiago [40%]; Samuel Rodríguez [40%] | 6.72h | 6.72h | 145.35 | 145.35 |

| ID | WBS | Task | Type | Duration | Start | Finish | Predecessors | Complete | Total slack | Free slack | Deadline | Resources | Work | Actual work | Cost | Actual cost |
| --- | --- | --- | --- | --- | --- | --- | --- | --- | --- | --- | --- | --- | --- | --- | --- | --- |
| 30 | 1.5.1.6 | **Front End** |  | 6d | 2013-09-23 A | 2013-09-30 A | 28, 25, 26, 27, 29 | 100% |  |  | 2013-09-30 |  | 24h | 24h | 519.12 | 519.12 |
| 31 | 1.5.1.6.1 | Student Views |  | 3d | 2013-09-23 A | 2013-09-25 A | 28, 25, 26, 27, 29 | 100% |  |  |  | Samuel Rodríguez [50%] | 12h | 12h | 259.56 | 259.56 |
| 32 | 1.5.1.6.2 | Professor Views |  | 3d | 2013-09-26 A | 2013-09-30 A | 31 | 100% |  |  |  | Samuel Rodríguez [50%] | 12h | 12h | 259.56 | 259.56 |
| 33 | 1.5.1.7 | **Back End** |  | 4d | 2013-09-24 A | 2013-09-27 A | 28, 25, 26, 27, 29 | 100% |  |  | 2013-09-30 |  | 12h | 12h | 259.56 | 259.56 |
| 34 | 1.5.1.7.1 | Sandboxed Prototype |  | 1d | 2013-09-24 A | 2013-09-24 A | 28, 25, 26, 27, 29 | 100% |  |  |  | Daniel Santiago [50%] | 4h | 4h | 86.52 | 86.52 |
| 35 | 1.5.1.7.2 | REST API documentation |  | 1d | 2013-09-25 A | 2013-09-25 A | 34 | 100% |  |  |  | Daniel Santiago [50%] | 4h | 4h | 86.52 | 86.52 |
| 36 | 1.5.1.7.3 | Queries Structure |  | 1d | 2013-09-27 A | 2013-09-27 A | 35 | 100% |  |  |  | Daniel Santiago [50%] | 4h | 4h | 86.52 | 86.52 |
| 37 | 1.5.1.8 | **Account and Repositories Manager** |  | 2d | 2013-09-24 A | 2013-09-25 A | 28, 25, 26, 27, 29 | 100% |  |  | 2013-09-30 |  | 8h | 8h | 211.52 | 211.52 |
| 38 | 1.5.1.8.1 | Repositories Management |  | 2d | 2013-09-24 A | 2013-09-25 A | 28, 25, 26, 27, 29 | 100% |  |  |  | Nelián Colón [50%] | 8h | 8h | 211.52 | 211.52 |
| 39 | 1.6 | **Implementation** |  | 20d | 2013-10-01 | 2013-10-26 | 23 |  | 0d |  | 2013-10-28 |  | 220h |  | 5,143.4 |  |
| 40 | 1.6.1 | **Front End** |  | 20d | 2013-10-01 | 2013-10-26 | 30 |  | 0d |  |  |  | 80h |  | 1,730.4 |  |
| 41 | 1.6.1.1 | Student Views |  | 10d | 2013-10-01 | 2013-10-14 | 30 |  | 0d |  |  | Samuel Rodríguez [50%] | 40h |  | 865.2 |  |
| 42 | 1.6.1.2 | Professor Views |  | 5d | 2013-10-15 | 2013-10-21 | 41 |  | 0d |  |  | Samuel Rodríguez [50%] | 20h |  | 432.6 |  |
| 43 | 1.6.1.3 | Administrator Views |  | 5d | 2013-10-22 | 2013-10-26 | 42 |  | 0d |  |  | Samuel Rodríguez [50%] | 20h |  | 432.6 |  |
| 44 | 1.6.2 | **Back End** |  | 15d | 2013-10-01 | 2013-10-21 | 33 |  | 0d |  | 2013-10-25 |  | 60h |  | 1,297.8 |  |
| 45 | 1.6.2.1 | Data Base |  | 4d | 2013-10-01 | 2013-10-04 | 33 |  | -1d | 0d |  | Daniel Santiago [50%] | 16h |  | 346.08 |  |
| 46 | 1.6.2.2 | Back End Server |  | 4d | 2013-10-07 | 2013-10-10 | 45 |  | -1d | 0d |  | Daniel Santiago [50%] | 16h |  | 346.08 |  |
| 47 | 1.6.2.3 | Testing Framework |  | 4d | 2013-10-11 | 2013-10-16 | 46 |  | -1d | 0d |  | Daniel Santiago [50%] | 16h |  | 346.08 |  |
| 48 | 1.6.2.4 | REST API |  | 3d | 2013-10-17 | 2013-10-21 | 47 |  | -1d | 0d |  | Daniel Santiago [50%] | 12h |  | 259.56 |  |
| 49 | 1.6.3 | **Accounts and Repositories Manager** |  | 20d | 2013-10-01 | 2013-10-26 | 37 |  | 0d |  |  |  | 80h |  | 2,115.2 |  |
| 50 | 1.6.3.1 | Accounts and Repositories Controllers |  | 5d | 2013-10-01 | 2013-10-07 | 37 |  | 2d | 0d |  | Nelián Colón [50%] | 20h |  | 528.8 |  |
| 51 | 1.6.3.2 | Repository Manager |  | 5d | 2013-10-08 | 2013-10-14 | 50 |  | 2d | 0d |  | Nelián Colón [50%] | 20h |  | 528.8 |  |
| 52 | 1.6.3.3 | Email Exchange System | manual | 4d | 2013-10-15 | 2013-10-18 | 51 |  |  |  |  | Nelián Colón [50%] | 16h |  | 423.04 |  |
| 53 | 1.6.3.4 | Ads |  | 3d | 2013-10-21 | 2013-10-23 | 52 |  | 2d |  |  | Nelián Colón [50%] | 12h |  | 317.28 |  |
| 54 | 1.6.3.5 | Communication with Back End Server |  | 3d | 2013-10-24 | 2013-10-26 | 45, 46, 47, 48 |  | -1d | 0d |  | Nelián Colón [50%] | 12h |  | 317.28 |  |

| ID | WBS | Task | Type | Duration | Start | Finish | Predecessors | Total slack | Free slack | Constraint | Deadline | Resources | Work | Cost |
| --- | --- | --- | --- | --- | --- | --- | --- | --- | --- | --- | --- | --- | --- | --- |
| 55 | 1.7 | **Unit Testing** |  | 7d | 2013-10-22 | 2013-10-29 | 44 | 0d |  |  |  |  | 28h | 644.12 |
| 56 | 1.7.1 | Front End Testing |  | 2d | 2013-10-28 | 2013-10-29 | 40 | 0d |  |  |  | Samuel Rodríguez [50%] | 8h | 173.04 |
| 57 | 1.7.2 | Back End Testing |  | 3d | 2013-10-22 | 2013-10-24 | 44 | 3d |  |  |  | Daniel Santiago [50%] | 12h | 259.56 |
| 58 | 1.7.3 | Account and Repositories Testing |  | 2d | 2013-10-28 | 2013-10-29 | 49 | -1d | 0d | start no earlier than 2013-10-26 |  | Nelián Colón [50%] | 8h | 211.52 |
| 59 | 1.8 | **System Integration** |  | 11d | 2013-10-30 | 2013-11-13 | 55 | 0d |  |  | 2013-11-15 |  | 104h | 2,403.44 |
| 60 | 1.8.1 | Integration of Front End with Back End |  | 3d | 2013-10-30 | 2013-11-01 | 56, 57 | 0d |  |  |  | Daniel Santiago [50%]; Samuel Rodríguez [50%] | 24h | 519.12 |
| 61 | 1.8.2 | Integration of Back End with Account and Repositories Manager |  | 2d | 2013-11-04 | 2013-11-05 | 57, 58, 60 | 0d |  |  |  | Daniel Santiago [50%]; Nelián Colón [50%] | 16h | 384.56 |
| 62 | 1.8.3 | Integration of Ads System |  | 1d | 2013-11-06 | 2013-11-06 | 57, 61 | 0d |  |  |  | Nelián Colón [50%] | 4h | 105.76 |
| 63 | 1.8.4 | Full Integration | milestone | 3d | 2013-11-07 | 2013-11-11 | 60, 61, 62 | 0d |  |  |  | Daniel Santiago [50%]; Nelián Colón [50%]; Samuel Rodríguez [50%] | 36h | 836.4 |
| 64 | 1.8.5 | Integration Testing |  | 2d | 2013-11-12 | 2013-11-13 | 63 | 0d |  |  |  | Daniel Santiago [50%]; Nelián Colón [50%]; Samuel Rodríguez [50%] | 24h | 557.6 |
| 65 | 1.9 | **Delivery** |  | 20d | 2013-11-14 | 2013-12-09 | 59 | 0d |  |  | 2013-12-09 |  | 96h | 2,230.4 |
| 66 | 1.9.1 | Final Deployment | milestone | 2d | 2013-11-14 | 2013-11-15 | 64 | 0d |  | finish no later than 2013-11-15 |  | Daniel Santiago [50%]; Nelián Colón [50%]; Samuel Rodríguez [50%] | 24h | 557.6 |
| 67 | 1.9.2 | System Demo | milestone | 1d | 2013-12-02 | 2013-12-02 | 66 | 2d |  | finish no earlier than 2013-12-02 |  | Daniel Santiago [50%]; Nelián Colón [50%]; Samuel Rodríguez [50%] | 12h | 278.8 |
| 68 | 1.9.3 | Final Report | milestone | 5d | 2013-12-05 | 2013-12-09 | 67 | 0d |  | finish no earlier than 2013-12-09 |  | Daniel Santiago [50%]; Nelián Colón [50%]; Samuel Rodríguez [50%] | 60h | 1,394 |
